# 生态补水项目

Schedule from a web Gantt chart, 2024-05-17 to 2025-01-14.
Every day is a working day

## Schedule

| ID | WBS | Task | Duration | Start | Finish | Predecessors | Status |
| --- | --- | --- | --- | --- | --- | --- | --- |
| 2 | 1 | 党委会汇报审议 | 1d | 2024-05-17 | 2024-05-17 |  | waiting |
| 3 | 2 | 发改投资项目赋码备案 | 1d | 2024-05-20 | 2024-05-20 | 2 | waiting |
| 4 | 3 | 管线规划路由咨询委托（直接委托） | 1d | 2024-05-21 | 2024-05-21 | 3 | waiting |
| 5 | 4 | 管线规划路由方案编制评审 | 14d | 2024-05-22 | 2024-06-04 | 4 | waiting |
| 6 | 5 | 补水可行性专项咨询委托（中介超市） | 5d | 2024-05-21 | 2024-05-25 | 3 | waiting |
| 7 | 6 | 补水可行性专项咨询编制评审 | 7d | 2024-05-28 | 2024-06-03 | 6 | waiting |
| 8 | 7 | 可研委托（中介超市） | 5d | 2024-05-21 | 2024-05-25 | 3 | waiting |
| 9 | 8 | 可研编制评审 | 14d | 2024-05-26 | 2024-06-08 | 8 | waiting |
| 10 | 9 | 可研报批 | 5d | 2024-06-09 | 2024-06-13 | 9, 7 | waiting |
| 11 | 10 | 招标代理及造价服务委托（中介超市） | 5d | 2024-05-21 | 2024-05-25 | 3 | waiting |
| 12 | 11 | 设计招标文件编制 | 5d | 2024-06-09 | 2024-06-13 | 11, 9 | waiting |
| 13 | 12 | 设计招标 | 25d | 2024-06-14 | 2024-07-08 | 12 | waiting |
| 14 | 13 | 初步设计编制评审 | 20d | 2024-07-09 | 2024-07-28 | 13 | waiting |
| 15 | 14 | 概算审核 | 15d | 2024-07-29 | 2024-08-12 | 14 | waiting |
| 16 | 15 | 环评登记备案 | 5d | 2024-07-29 | 2024-08-02 | 14 | waiting |
| 17 | 16 | 初设报批 | 5d | 2024-08-13 | 2024-08-17 | 15, 16 | waiting |
| 18 | 17 | 施工图编制 | 15d | 2024-07-29 | 2024-08-12 | 14 | waiting |
| 19 | 18 | 施工图审核 | 10d | 2024-08-18 | 2024-08-27 | 17, 18 | waiting |
| 20 | 19 | 农业局水利工程相关方案手续办理 | 20d | 2024-08-13 | 2024-09-01 | 18 | waiting |
| 21 | 20 | 标书及招标控制价编制 | 10d | 2024-08-13 | 2024-08-22 | 18 | waiting |
| 22 | 21 | 施工招标 | 25d | 2024-08-23 | 2024-09-16 | 21 | waiting |
| 23 | 22 | 施工许可 | 3d | 2024-09-17 | 2024-09-19 | 20, 22 | waiting |
| 24 | 23 | 施工阶段 | 120d | 2024-09-17 | 2025-01-14 | 22 | waiting |
